# Progetto 2 PM aggiornato con i ritardi

Schedule from MS Project, 2021-01-12 to 2021-08-26, status date 2021-06-10, costs in €, A marks actual dates.

## Calendars

- Standard: Mon-Fri 09:00-13:00, 14:00-18:00; Sat-Sun off.

## Resources

| Resource | Rate | Cost per use |
| --- | --- | --- |
| Gabriele De Bartolomeo | 25.13 |  |
| Cristian Colavito | 36.12 |  |
| Giorgio Levi | 34.37 |  |
| Carla Mora | 25.13 |  |
| Riccardo Melo | 22.07 |  |
| Fanny Velasco | 20 |  |
| Tiziano Seri | 20 |  |
| Mauro Neri | 20 |  |
| Franco Morbidoni | 18.22 |  |
| Ronald McDonovan | 15 |  |
| Franca Menta | 16.26 |  |
| Francesca Rocca | 17.11 |  |
| Giorgio Nelli | 17.11 |  |
| Budget corso anti social engineering |  |  |
| Budget Penetration testing |  |  |
| Wifi Access Points |  | 80 |
| Switches L2/L3 e Routers |  | 80 |
| Stampanti di rete |  | 1000 |
| Enterprise Switches (Accesso) |  | 600 |
| Enterprise Switches (Aggregazione) |  | 3000 |
| Enterprise Routers (Edge) |  | 6000 |
| Firewall |  | 10000 |
| Domain Servers |  | 1000 |
| Storage Area Network |  | 30000 |
| Roberto Nigro | 20 |  |
| spesa per wp immobile |  |  |
| Spese Generali per wp |  |  |
| Spesa poliza assicurativa capannone |  |  |
| sconto acquisto HW |  |  |

## Schedule

| ID | WBS | Task | Type | Duration | Start | Finish | Predecessors | Complete | Remaining | Baseline start | Baseline finish | Baseline duration | Baseline 1 start | Baseline 1 finish | Total slack | Constraint | Resources | Work | Actual work | Cost | Baseline cost | Actual cost |
| --- | --- | --- | --- | --- | --- | --- | --- | --- | --- | --- | --- | --- | --- | --- | --- | --- | --- | --- | --- | --- | --- | --- |
| 1 | 1 | **Preso 3D** |  | 163d | 2021-01-12 A | 2021-08-26 |  | 88% | 19.82d | 2021-01-12 | 2021-08-26 | 163d | 2021-01-12 | 2021-08-26 | 0d |  |  | 4131h | 3837h | 176,628.89 | 184,128.89 | 147,884.61 |
| 2 | 1.1 | **OR1:GESTIONE E CONTROLLO** |  | 163d | 2021-01-12 A | 2021-08-26 |  | 69% | 49.92d | 2021-01-12 | 2021-08-26 | 163d | 2021-01-12 | 2021-08-26 | 0d |  |  | 1000h | 706h | 45,245 | 45,245 | 25,500.72 |
| 3 | 1.1.1 | **Documenti di Project Management** |  | 157d | 2021-01-12 A | 2021-08-18 |  | 69% | 49d | 2021-01-12 | 2021-08-18 | 157d | 2021-01-12 | 2021-08-18 | 6d |  | spesa per wp immobile [0.1%]; Spese Generali per wp [0.1%] | 976h | 682h | 44,378.12 | 44,378.12 | 24,633.84 |
| 4 | 1.1.1.1 | Business Case e Piano di Progetto |  | 3d | 2021-01-12 A | 2021-01-14 A |  | 100% |  | 2021-01-12 | 2021-01-14 | 3d | 2021-01-12 | 2021-01-14 |  |  | Cristian Colavito | 24h | 24h | 866.88 | 866.88 | 866.88 |
| 5 | 1.1.1.2 | Documento di Gestione dei Rischi |  | 2d | 2021-01-15 A | 2021-01-18 A | 4 | 100% |  | 2021-01-15 | 2021-01-18 | 2d | 2021-01-15 | 2021-01-18 |  |  | Cristian Colavito; Spesa poliza assicurativa capannone [0.1%] | 16h | 16h | 5,577.92 | 5,577.92 | 577.92 |
| 6 | 1.1.1.3 | Documento di Gestione della Qualità |  | 3d | 2021-01-19 A | 2021-01-21 A | 5 | 100% |  | 2021-01-19 | 2021-01-21 | 3d | 2021-01-19 | 2021-01-21 |  |  | Cristian Colavito | 24h | 24h | 866.88 | 866.88 | 866.88 |
| 7 | 1.1.1.4 | Documento di Gestione della Comunicazione |  | 5d | 2021-01-22 A | 2021-01-28 A | 6 | 100% |  | 2021-01-22 | 2021-01-28 | 5d | 2021-01-22 | 2021-01-28 |  |  | Cristian Colavito | 40h | 40h | 1,444.8 | 1,444.8 | 1,444.8 |
| 8 | 1.1.1.5 | Documento di Gestione del Timing, del Budget e delle Risorse |  | 2d | 2021-01-29 A | 2021-02-01 A | 7 | 100% |  | 2021-01-29 | 2021-02-01 | 2d | 2021-01-29 | 2021-02-01 |  |  | Cristian Colavito | 16h | 16h | 577.92 | 577.92 | 577.92 |
| 9 | 1.1.1.6 | Studio di mercato |  | 2d | 2021-02-02 A | 2021-02-03 A | 8 | 100% |  | 2021-02-02 | 2021-02-03 | 2d | 2021-02-02 | 2021-02-03 |  |  | Cristian Colavito | 16h | 16h | 577.92 | 577.92 | 577.92 |
| 10 | 1.1.1.7 | Documento di Controllo e Monitoraggio sugli Obiettivi del Progetto |  | 140d | 2021-02-04 A | 2021-08-18 | 9 | 65% | 49d | 2021-02-04 | 2021-08-18 | 140d | 2021-02-04 | 2021-08-18 | 6d | finish no earlier than 2021-08-13 | Cristian Colavito | 840h | 546h | 30,340.8 | 30,340.8 | 19,721.52 |
| 11 | 1.1.2 | **Chiusura e lesson Learned** |  | 3d | 2021-08-24 A | 2021-08-26 A | 10, 100, 98 | 100% |  | 2021-08-24 | 2021-08-26 | 3d | 2021-08-24 | 2021-08-26 |  |  |  | 24h | 24h | 866.88 | 866.88 | 866.88 |
| 12 | 1.1.2.1 | Documento di Chiusura |  | 1d | 2021-08-24 A | 2021-08-24 A |  | 100% |  | 2021-08-24 | 2021-08-24 | 1d | 2021-08-24 | 2021-08-24 |  |  | Cristian Colavito | 8h | 8h | 288.96 | 288.96 | 288.96 |
| 13 | 1.1.2.2 | Lessons Learned |  | 2d | 2021-08-25 A | 2021-08-26 A | 12 | 100% |  | 2021-08-25 | 2021-08-26 | 2d | 2021-08-25 | 2021-08-26 |  |  | Cristian Colavito | 16h | 16h | 577.92 | 577.92 | 577.92 |
| 14 | 1.2 | **OR2 Realizzazione Back-end** |  | 52d | 2021-02-03 A | 2021-04-16 A |  | 100% |  | 2021-02-03 | 2021-04-16 | 52d | 2021-02-03 | 2021-04-16 |  |  |  | 1280h | 1280h | 30,416.2 | 30,416.2 | 30,416.2 |
| 15 | 1.2.1 | Milestone 1: Documenti inizio progetto | milestone | 0d | 2021-02-03 A | 2021-02-03 A | 9 | 100% |  | 2021-02-03 | 2021-02-03 | 0d | 2021-02-03 | 2021-02-03 |  |  |  |  |  |  |  |  |
| 16 | 1.2.2 | **Configurazione Server** |  | 3d | 2021-02-04 A | 2021-02-08 A | 15 | 100% |  | 2021-02-04 | 2021-02-08 | 3d | 2021-02-04 | 2021-02-08 |  |  | spesa per wp immobile [0.1%]; Spese Generali per wp [0.1%] | 48h | 48h | 5,257.8 | 5,257.8 | 5,257.8 |
| 17 | 1.2.2.1 | Inizializzazione dominio web |  | 2d | 2021-02-04 A | 2021-02-05 A |  | 100% |  | 2021-02-04 | 2021-02-05 | 2d | 2021-02-04 | 2021-02-05 |  |  | Carla Mora; Riccardo Melo | 32h | 32h | 755.2 | 755.2 | 755.2 |
| 18 | 1.2.2.2 | Avvio server sul dominio |  | 1d | 2021-02-08 A | 2021-02-08 A | 17 | 100% |  | 2021-02-08 | 2021-02-08 | 1d | 2021-02-08 | 2021-02-08 |  |  | Carla Mora; Riccardo Melo | 16h | 16h | 377.6 | 377.6 | 377.6 |
| 19 | 1.2.3 | **Progettazione e realizzazione database** |  | 13d | 2021-02-09 A | 2021-02-25 A | 16 | 100% |  | 2021-02-09 | 2021-02-25 | 13d | 2021-02-09 | 2021-02-25 |  |  |  | 208h | 208h | 4,678.4 | 4,678.4 | 4,678.4 |
| 20 | 1.2.3.1 | Realizzazione diagramma E/R |  | 5d | 2021-02-09 A | 2021-02-15 A |  | 100% |  | 2021-02-09 | 2021-02-15 | 5d | 2021-02-09 | 2021-02-15 |  |  | Carla Mora; Riccardo Melo | 80h | 80h | 1,888 | 1,888 | 1,888 |
| 21 | 1.2.3.2 | Progettazione logica del database |  | 2d | 2021-02-16 A | 2021-02-17 A | 20 | 100% |  | 2021-02-16 | 2021-02-17 | 2d | 2021-02-16 | 2021-02-17 |  |  | Carla Mora; Riccardo Melo | 32h | 32h | 755.2 | 755.2 | 755.2 |
| 22 | 1.2.3.3 | Progettazione fisica del database |  | 2d | 2021-02-18 A | 2021-02-19 A | 21 | 100% |  | 2021-02-18 | 2021-02-19 | 2d | 2021-02-18 | 2021-02-19 |  |  | Carla Mora; Riccardo Melo | 32h | 32h | 755.2 | 755.2 | 755.2 |
| 23 | 1.2.3.4 | Implementazione del database |  | 4d | 2021-02-22 A | 2021-02-25 A | 22 | 100% |  | 2021-02-22 | 2021-02-25 | 4d | 2021-02-22 | 2021-02-25 |  |  | Tiziano Seri; Mauro Neri | 64h | 64h | 1,280 | 1,280 | 1,280 |
| 24 | 1.2.4 | Milestone 2: Database | milestone | 0d | 2021-02-25 A | 2021-02-25 A | 19 | 100% |  | 2021-02-25 | 2021-02-25 | 0d | 2021-02-25 | 2021-02-25 |  |  |  |  |  |  |  |  |

| ID | WBS | Task | Type | Duration | Start | Finish | Predecessors | Complete | Baseline start | Baseline finish | Baseline duration | Baseline 1 start | Baseline 1 finish | Constraint | Resources | Work | Actual work | Cost | Baseline cost | Actual cost |
| --- | --- | --- | --- | --- | --- | --- | --- | --- | --- | --- | --- | --- | --- | --- | --- | --- | --- | --- | --- | --- |
| 25 | 1.2.5 | **Realizzazione Service** |  | 18d | 2021-02-26 A | 2021-03-23 A | 24 | 100% | 2021-02-26 | 2021-03-23 | 18d | 2021-02-26 | 2021-03-23 |  |  | 512h | 512h | 10,240 | 10,240 | 10,240 |
| 26 | 1.2.5.1 | Servizi del User |  | 8d | 2021-02-26 A | 2021-03-09 A |  | 100% | 2021-02-26 | 2021-03-09 | 8d | 2021-02-26 | 2021-03-09 |  | Fanny Velasco; Mauro Neri | 128h | 128h | 2,560 | 2,560 | 2,560 |
| 27 | 1.2.5.2 | Servizi dell Azienda |  | 8d | 2021-02-26 A | 2021-03-09 A |  | 100% | 2021-02-26 | 2021-03-09 | 8d | 2021-02-26 | 2021-03-09 |  | Roberto Nigro; Tiziano Seri | 128h | 128h | 2,560 | 2,560 | 2,560 |
| 28 | 1.2.5.3 | Servizi del designer |  | 8d | 2021-03-12 A | 2021-03-23 A | 26 | 100% | 2021-03-12 | 2021-03-23 | 8d | 2021-03-12 | 2021-03-23 |  | Fanny Velasco; Mauro Neri | 128h | 128h | 2,560 | 2,560 | 2,560 |
| 29 | 1.2.5.4 | Servizi del Moderator |  | 8d | 2021-03-12 A | 2021-03-23 A | 27 | 100% | 2021-03-12 | 2021-03-23 | 8d | 2021-03-12 | 2021-03-23 |  | Roberto Nigro; Tiziano Seri | 128h | 128h | 2,560 | 2,560 | 2,560 |
| 30 | 1.2.6 | **Realizzazione Controller** |  | 16d | 2021-03-26 A | 2021-04-16 A | 25 | 100% | 2021-03-26 | 2021-04-16 | 16d | 2021-03-26 | 2021-04-16 |  |  | 512h | 512h | 10,240 | 10,240 | 10,240 |
| 31 | 1.2.6.1 | Realizzazione Controller Public |  | 6d | 2021-03-26 A | 2021-04-02 A |  | 100% | 2021-03-26 | 2021-04-02 | 6d | 2021-03-26 | 2021-04-02 |  | Roberto Nigro; Tiziano Seri | 96h | 96h | 1,920 | 1,920 | 1,920 |
| 32 | 1.2.6.2 | Realizzazione Controller InternoAzienda |  | 6d | 2021-03-26 A | 2021-04-02 A |  | 100% | 2021-03-26 | 2021-04-02 | 6d | 2021-03-26 | 2021-04-02 |  | Fanny Velasco; Mauro Neri | 96h | 96h | 1,920 | 1,920 | 1,920 |
| 33 | 1.2.6.3 | Realizzazione Controller User |  | 7d | 2021-04-05 A | 2021-04-13 A | 31 | 100% | 2021-04-05 | 2021-04-13 | 7d | 2021-04-05 | 2021-04-13 |  | Roberto Nigro; Tiziano Seri | 56h | 56h | 1,120 | 1,120 | 1,120 |
| 34 | 1.2.6.4 | Realizzazione Controller Designer |  | 10d | 2021-04-05 A | 2021-04-16 A | 32 | 100% | 2021-04-05 | 2021-04-16 | 10d | 2021-04-05 | 2021-04-16 |  | Fanny Velasco; Mauro Neri | 160h | 160h | 3,200 | 3,200 | 3,200 |
| 35 | 1.2.6.5 | Realizzazione Controller Moderator |  | 10d | 2021-04-05 A | 2021-04-16 A | 31 | 100% | 2021-04-05 | 2021-04-16 | 10d | 2021-04-05 | 2021-04-16 |  | Tiziano Seri; Roberto Nigro | 104h | 104h | 2,080 | 2,080 | 2,080 |
| 36 | 1.2.7 | SAL: Fine Back-end | milestone | 0d | 2021-04-16 A | 2021-04-16 A | 30 | 100% | 2021-04-16 | 2021-04-16 | 0d | 2021-04-16 | 2021-04-16 |  |  |  |  |  |  |  |
| 37 | 1.3 | **OR3: Realizzazione Front-end** |  | 39d | 2021-04-19 A | 2021-06-10 A | 14 | 100% | 2021-04-19 | 2021-06-10 | 39d | 2021-04-19 | 2021-06-10 |  |  | 958h | 958h | 22,100.72 | 22,100.72 | 22,100.72 |
| 38 | 1.3.1 | **Mappa di navigazione del sito e design del sito** |  | 25d | 2021-04-19 A | 2021-05-21 A | 36 | 100% | 2021-04-19 | 2021-05-21 | 25d | 2021-04-19 | 2021-05-21 |  | spesa per wp immobile [0.1%]; Spese Generali per wp [0.1%] | 378h | 378h | 10,500.72 | 10,500.72 | 10,500.72 |
| 39 | 1.3.1.1 | Realizzazione mappa di navigazione del sito |  | 1d | 2021-04-19 A | 2021-04-19 A |  | 100% | 2021-04-19 | 2021-04-19 | 1d | 2021-04-19 | 2021-04-19 |  | Carla Mora; Ronald McDonovan | 12h | 12h | 261.04 | 261.04 | 261.04 |
| 40 | 1.3.1.2 | Scelta colori e font del sito |  | 2d | 2021-04-19 A | 2021-04-20 A |  | 100% | 2021-04-19 | 2021-04-20 | 2d | 2021-04-19 | 2021-04-20 |  | Franco Morbidoni; Ronald McDonovan | 24h | 24h | 411.52 | 411.52 | 411.52 |
| 41 | 1.3.1.3 | Progettazione Header |  | 2d | 2021-04-21 A | 2021-04-22 A | 40 | 100% | 2021-04-21 | 2021-04-22 | 2d | 2021-04-21 | 2021-04-22 |  | Franco Morbidoni; Ronald McDonovan | 16h | 16h | 265.76 | 265.76 | 265.76 |
| 42 | 1.3.1.4 | Progettazione Footer |  | 2d | 2021-04-21 A | 2021-04-22 A | 40 | 100% | 2021-04-21 | 2021-04-22 | 2d | 2021-04-21 | 2021-04-22 |  | Franco Morbidoni; Ronald McDonovan | 16h | 16h | 265.76 | 265.76 | 265.76 |
| 43 | 1.3.1.5 | Progettazione Pagina Profilo |  | 2d | 2021-04-23 A | 2021-04-26 A | 42 | 100% | 2021-04-23 | 2021-04-26 | 2d | 2021-04-23 | 2021-04-26 |  | Franco Morbidoni; Ronald McDonovan | 16h | 16h | 265.76 | 265.76 | 265.76 |
| 44 | 1.3.1.6 | Progettazione Pagina Login |  | 2d | 2021-04-23 A | 2021-04-26 A | 42 | 100% | 2021-04-23 | 2021-04-26 | 2d | 2021-04-23 | 2021-04-26 |  | Franco Morbidoni; Ronald McDonovan | 16h | 16h | 265.76 | 265.76 | 265.76 |
| 45 | 1.3.1.7 | Progettazione Registrazione |  | 2d | 2021-04-27 A | 2021-04-28 A | 44 | 100% | 2021-04-27 | 2021-04-28 | 2d | 2021-04-27 | 2021-04-28 |  | Franco Morbidoni; Ronald McDonovan | 16h | 16h | 265.76 | 265.76 | 265.76 |
| 46 | 1.3.1.8 | Progettazione area recensioni |  | 3d | 2021-04-27 A | 2021-04-29 A | 44 | 100% | 2021-04-27 | 2021-04-29 | 3d | 2021-04-27 | 2021-04-29 |  | Franco Morbidoni; Ronald McDonovan | 28h | 28h | 471.52 | 471.52 | 471.52 |
| 47 | 1.3.1.9 | Progettazione Carrello |  | 2d | 2021-04-30 A | 2021-05-03 A | 46 | 100% | 2021-04-30 | 2021-05-03 | 2d | 2021-04-30 | 2021-05-03 |  | Franco Morbidoni | 8h | 8h | 145.76 | 145.76 | 145.76 |
| 48 | 1.3.1.10 | Progettazione area acquisti |  | 3d | 2021-04-30 A | 2021-05-04 A | 46 | 100% | 2021-04-30 | 2021-05-04 | 3d | 2021-04-30 | 2021-05-04 |  | Franco Morbidoni; Ronald McDonovan | 28h | 28h | 471.52 | 471.52 | 471.52 |
| 49 | 1.3.1.11 | Progettazione pagina prodotto |  | 2d | 2021-05-05 A | 2021-05-06 A | 48 | 100% | 2021-05-05 | 2021-05-06 | 2d | 2021-05-05 | 2021-05-06 |  | Franco Morbidoni; Ronald McDonovan | 14h | 14h | 229.32 | 229.32 | 229.32 |
| 50 | 1.3.1.12 | Progettazione Modifica Prodotto |  | 1d | 2021-05-05 A | 2021-05-05 A | 48 | 100% | 2021-05-05 | 2021-05-05 | 1d | 2021-05-05 | 2021-05-05 |  | Franco Morbidoni; Ronald McDonovan | 8h | 8h | 132.88 | 132.88 | 132.88 |
| 51 | 1.3.1.13 | Progettazione Visualizza profilo utente e designer |  | 2d | 2021-05-06 A | 2021-05-07 A | 50 | 100% | 2021-05-06 | 2021-05-07 | 2d | 2021-05-06 | 2021-05-07 |  | Franco Morbidoni; Ronald McDonovan | 18h | 18h | 302.2 | 302.2 | 302.2 |
| 52 | 1.3.1.14 | Progettazione Area Lavora con noi |  | 1d | 2021-05-06 A | 2021-05-06 A | 50 | 100% | 2021-05-06 | 2021-05-06 | 1d | 2021-05-06 | 2021-05-06 | finish no later than 2021-05-06 | Franco Morbidoni | 2h | 2h | 36.44 | 36.44 | 36.44 |
| 53 | 1.3.1.15 | Progettazione Chat |  | 4d | 2021-05-10 A | 2021-05-13 A | 52, 51 | 100% | 2021-05-10 | 2021-05-13 | 4d | 2021-05-10 | 2021-05-13 |  | Franco Morbidoni; Ronald McDonovan | 56h | 56h | 917.28 | 917.28 | 917.28 |
| 54 | 1.3.1.16 | Progettazione Area Candidati Designer |  | 2d | 2021-05-10 A | 2021-05-11 A | 51, 52 | 100% | 2021-05-10 | 2021-05-11 | 2d | 2021-05-10 | 2021-05-11 |  | Franco Morbidoni | 8h | 8h | 145.76 | 145.76 | 145.76 |
| 55 | 1.3.1.17 | Progettazione Area Ordini |  | 1d | 2021-05-14 A | 2021-05-14 A | 54, 53 | 100% | 2021-05-14 | 2021-05-14 | 1d | 2021-05-14 | 2021-05-14 |  | Franco Morbidoni; Ronald McDonovan | 8h | 8h | 132.88 | 132.88 | 132.88 |
| 56 | 1.3.1.18 | Progettazione Area Gestione Produzione |  | 2d | 2021-05-14 A | 2021-05-17 A | 53, 54 | 100% | 2021-05-14 | 2021-05-17 | 2d | 2021-05-14 | 2021-05-17 |  | Franco Morbidoni; Ronald McDonovan | 24h | 24h | 398.64 | 398.64 | 398.64 |
| 57 | 1.3.1.19 | Progettazione Area Classifica |  | 4d | 2021-05-18 A | 2021-05-21 A | 56 | 100% | 2021-05-18 | 2021-05-21 | 4d | 2021-05-18 | 2021-05-21 |  | Franco Morbidoni | 28h | 28h | 510.16 | 510.16 | 510.16 |
| 58 | 1.3.1.20 | Progettazione Area Ricerca Prodotto |  | 4d | 2021-05-18 A | 2021-05-21 A | 56 | 100% | 2021-05-18 | 2021-05-21 | 4d | 2021-05-18 | 2021-05-21 |  | Ronald McDonovan | 32h | 32h | 480 | 480 | 480 |
| 59 | 1.3.2 | Milestone 3: Mockup del sito | milestone | 0d | 2021-05-17 A | 2021-05-17 A | 55 | 100% | 2021-05-17 | 2021-05-17 | 0d | 2021-05-17 | 2021-05-17 | start no earlier than 2021-05-17 |  |  |  |  |  |  |

| ID | WBS | Task | Type | Duration | Start | Finish | Predecessors | Complete | Remaining | Baseline start | Baseline finish | Baseline duration | Baseline 1 start | Baseline 1 finish | Total slack | Resources | Work | Actual work | Cost | Baseline cost | Actual cost |
| --- | --- | --- | --- | --- | --- | --- | --- | --- | --- | --- | --- | --- | --- | --- | --- | --- | --- | --- | --- | --- | --- |
| 60 | 1.3.3 | **Realizzazione Viste** |  | 19d | 2021-05-17 A | 2021-06-10 A | 59 | 100% |  | 2021-05-17 | 2021-06-10 | 19d | 2021-05-17 | 2021-06-10 |  |  | 580h | 580h | 11,600 | 11,600 | 11,600 |
| 61 | 1.3.3.3 | Realizzazione Header |  | 1d | 2021-05-17 A | 2021-05-17 A |  | 100% |  | 2021-05-17 | 2021-05-17 | 1d | 2021-05-17 | 2021-05-17 |  | Fanny Velasco; Mauro Neri | 16h | 16h | 320 | 320 | 320 |
| 62 | 1.3.3.4 | Realizzazione Footer |  | 1d | 2021-05-17 A | 2021-05-17 A |  | 100% |  | 2021-05-17 | 2021-05-17 | 1d | 2021-05-17 | 2021-05-17 |  | Tiziano Seri; Roberto Nigro | 16h | 16h | 320 | 320 | 320 |
| 63 | 1.3.3.5 | Realizzazione Pagina Profilo |  | 1d | 2021-05-18 A | 2021-05-18 A | 61 | 100% |  | 2021-05-18 | 2021-05-18 | 1d | 2021-05-18 | 2021-05-18 |  | Fanny Velasco; Mauro Neri | 16h | 16h | 320 | 320 | 320 |
| 64 | 1.3.3.6 | Realizzazione Pagina Login |  | 1d | 2021-05-18 A | 2021-05-18 A | 62 | 100% |  | 2021-05-18 | 2021-05-18 | 1d | 2021-05-18 | 2021-05-18 |  | Tiziano Seri; Roberto Nigro | 16h | 16h | 320 | 320 | 320 |
| 65 | 1.3.3.7 | Realizzazione Registrazione |  | 1d | 2021-05-19 A | 2021-05-19 A | 63 | 100% |  | 2021-05-19 | 2021-05-19 | 1d | 2021-05-19 | 2021-05-19 |  | Fanny Velasco; Mauro Neri | 16h | 16h | 320 | 320 | 320 |
| 66 | 1.3.3.8 | Realizzazione area recensioni |  | 2d | 2021-05-19 A | 2021-05-20 A | 64 | 100% |  | 2021-05-19 | 2021-05-20 | 2d | 2021-05-19 | 2021-05-20 |  | Tiziano Seri; Roberto Nigro | 32h | 32h | 640 | 640 | 640 |
| 67 | 1.3.3.9 | Realizzazione Carrello |  | 2d | 2021-05-20 A | 2021-05-21 A | 65 | 100% |  | 2021-05-20 | 2021-05-21 | 2d | 2021-05-20 | 2021-05-21 |  | Fanny Velasco; Mauro Neri | 20h | 20h | 400 | 400 | 400 |
| 68 | 1.3.3.10 | Realizzazione area acquisti |  | 2d | 2021-05-21 A | 2021-05-24 A | 66 | 100% |  | 2021-05-21 | 2021-05-24 | 2d | 2021-05-21 | 2021-05-24 |  | Tiziano Seri; Roberto Nigro | 32h | 32h | 640 | 640 | 640 |
| 69 | 1.3.3.11 | Realizzazione pagina prodotto |  | 3d | 2021-05-24 A | 2021-05-26 A | 67 | 100% |  | 2021-05-24 | 2021-05-26 | 3d | 2021-05-24 | 2021-05-26 |  | Fanny Velasco; Mauro Neri | 48h | 48h | 960 | 960 | 960 |
| 70 | 1.3.3.12 | Realizzazione Modifica Prodotto |  | 3d | 2021-05-25 A | 2021-05-27 A | 68 | 100% |  | 2021-05-25 | 2021-05-27 | 3d | 2021-05-25 | 2021-05-27 |  | Tiziano Seri; Roberto Nigro | 48h | 48h | 960 | 960 | 960 |
| 71 | 1.3.3.13 | Realizzazione Visualizza profilo utente e designer |  | 2d | 2021-05-27 A | 2021-05-28 A | 69 | 100% |  | 2021-05-27 | 2021-05-28 | 2d | 2021-05-27 | 2021-05-28 |  | Fanny Velasco; Mauro Neri | 32h | 32h | 640 | 640 | 640 |
| 72 | 1.3.3.14 | Realizzazione Area Lavora con noi |  | 2d | 2021-05-28 A | 2021-05-31 A | 70 | 100% |  | 2021-05-28 | 2021-05-31 | 2d | 2021-05-28 | 2021-05-31 |  | Tiziano Seri; Roberto Nigro | 32h | 32h | 640 | 640 | 640 |
| 73 | 1.3.3.15 | Realizzazione Chat |  | 2d | 2021-05-31 A | 2021-06-01 A | 71 | 100% |  | 2021-05-31 | 2021-06-01 | 2d | 2021-05-31 | 2021-06-01 |  | Mauro Neri; Fanny Velasco | 32h | 32h | 640 | 640 | 640 |
| 74 | 1.3.3.16 | Realizzazione Area Candidati Designer |  | 2d | 2021-06-01 A | 2021-06-02 A | 72 | 100% |  | 2021-06-01 | 2021-06-02 | 2d | 2021-06-01 | 2021-06-02 |  | Tiziano Seri; Roberto Nigro | 32h | 32h | 640 | 640 | 640 |
| 75 | 1.3.3.17 | Realizzazione Area Ordini |  | 2d | 2021-06-02 A | 2021-06-03 A | 73 | 100% |  | 2021-06-02 | 2021-06-03 | 2d | 2021-06-02 | 2021-06-03 |  | Mauro Neri; Fanny Velasco | 32h | 32h | 640 | 640 | 640 |
| 76 | 1.3.3.18 | Realizzazione Area Gestione Produzione |  | 2d | 2021-06-03 A | 2021-06-04 A | 74 | 100% |  | 2021-06-03 | 2021-06-04 | 2d | 2021-06-03 | 2021-06-04 |  | Tiziano Seri; Roberto Nigro | 32h | 32h | 640 | 640 | 640 |
| 77 | 1.3.3.19 | Realizzazione Area Classifica |  | 4d | 2021-06-04 A | 2021-06-09 A | 75 | 100% |  | 2021-06-04 | 2021-06-09 | 4d | 2021-06-04 | 2021-06-09 |  | Mauro Neri; Fanny Velasco | 64h | 64h | 1,280 | 1,280 | 1,280 |
| 78 | 1.3.3.20 | Realizzazione Area Ricerca Prodotto |  | 4d | 2021-06-07 A | 2021-06-10 A | 76 | 100% |  | 2021-06-07 | 2021-06-10 | 4d | 2021-06-07 | 2021-06-10 |  | Tiziano Seri; Roberto Nigro | 64h | 64h | 1,280 | 1,280 | 1,280 |
| 79 | 1.3.4 | SAL: Fine Front-end | milestone | 0d | 2021-06-10 A | 2021-06-10 A | 60 | 100% |  | 2021-06-10 | 2021-06-10 | 0d | 2021-06-10 | 2021-06-10 |  |  |  |  |  |  |  |
| 80 | 1.4 | **OR4: Organizzazione della rete locale e testing** |  | 55d | 2021-06-11 A | 2021-08-26 | 37 | 99% | 0d | 2021-06-11 | 2021-08-26 | 55d | 2021-06-11 | 2021-08-26 | 0d |  | 893h | 893h | 78,866.97 | 86,366.97 | 69,866.97 |
| 81 | 1.4.1 | **Report pianificazione dell’infrastruttura di rete** |  | 19d | 2021-06-11 A | 2021-07-07 A | 79 | 100% |  | 2021-06-11 | 2021-07-07 | 19d | 2021-06-11 | 2021-07-07 |  | spesa per wp immobile [0.1%]; Spese Generali per wp [0.1%] | 276h | 276h | 12,465.36 | 12,465.36 | 12,465.36 |
| 82 | 1.4.1.1 | Analisi di mercato sulle soluzioni topologiche moderne |  | 2d | 2021-06-11 A | 2021-06-14 A |  | 100% |  | 2021-06-11 | 2021-06-14 | 2d | 2021-06-11 | 2021-06-14 |  | Gabriele De Bartolomeo; Giorgio Levi | 32h | 32h | 952 | 952 | 952 |
| 83 | 1.4.1.2 | Individuazione asset informatici e rischi correlati |  | 6d | 2021-06-15 A | 2021-06-22 A | 82 | 100% |  | 2021-06-15 | 2021-06-22 | 6d | 2021-06-15 | 2021-06-22 |  | Gabriele De Bartolomeo; Giorgio Levi | 96h | 96h | 2,856 | 2,856 | 2,856 |
| 84 | 1.4.1.3 | Pianificazione su software di simulazione di topologie di rete |  | 7d | 2021-06-23 A | 2021-07-01 A | 83 | 100% |  | 2021-06-23 | 2021-07-01 | 7d | 2021-06-23 | 2021-07-01 |  | Gabriele De Bartolomeo; Giorgio Levi | 84h | 84h | 2,628.36 | 2,628.36 | 2,628.36 |
| 85 | 1.4.1.4 | Stesura di report finale sulla pianificazione della rete |  | 4d | 2021-07-02 A | 2021-07-07 A | 84 | 100% |  | 2021-07-02 | 2021-07-07 | 4d | 2021-07-02 | 2021-07-07 |  | Gabriele De Bartolomeo; Giorgio Levi | 64h | 64h | 1,904 | 1,904 | 1,904 |
| 86 | 1.4.2 | Milestone 4: Progettazione Infrastruttura | milestone | 0d | 2021-07-07 A | 2021-07-07 A | 81 | 100% |  | 2021-07-07 | 2021-07-07 | 0d | 2021-07-07 | 2021-07-07 |  |  |  |  |  |  |  |

| ID | WBS | Task | Type | Duration | Start | Finish | Predecessors | Complete | Remaining | Baseline start | Baseline finish | Baseline duration | Baseline 1 start | Baseline 1 finish | Total slack | Constraint | Resources | Work | Actual work | Cost | Baseline cost | Actual cost |
| --- | --- | --- | --- | --- | --- | --- | --- | --- | --- | --- | --- | --- | --- | --- | --- | --- | --- | --- | --- | --- | --- | --- |
| 87 | 1.4.3 | **Realizzazione dell’infrastruttura di rete** |  | 19d | 2021-07-08 A | 2021-08-03 A | 86 | 100% |  | 2021-07-08 | 2021-08-03 | 19d | 2021-07-08 | 2021-08-03 |  |  |  | 74h | 74h | 45,734.66 | 53,234.66 | 45,734.66 |
| 88 | 1.4.3.1 | Acquisto degli apparati necessari e realizzazione della rete |  | 16d | 2021-07-08 A | 2021-07-29 A |  | 100% |  | 2021-07-08 | 2021-07-29 | 16d | 2021-07-08 | 2021-07-29 |  |  | Gabriele De Bartolomeo; Wifi Access Points [1600%]; Switches L2/L3 e Routers [1225%]; Stampanti di rete [250%]; Enterprise Switches (Accesso) [250%]; Enterprise Switches (Aggregazione) [400%]; Enterprise Routers (Edge) [250%]; Firewall [250%]; Domain Servers [250%]; Storage Area Network [175%] | 26h | 26h | 44,913.38 | 52,413.38 | 44,913.38 |
| 89 | 1.4.3.2 | Messa in opera dell’infrastruttura di rete |  | 3d | 2021-07-30 A | 2021-08-03 A | 88 | 100% |  | 2021-07-30 | 2021-08-03 | 3d | 2021-07-30 | 2021-08-03 |  |  | Giorgio Nelli; Francesca Rocca | 48h | 48h | 821.28 | 821.28 | 821.28 |
| 90 | 1.4.4 | **Rafforzamento della sicurezza informatica** |  | 18d | 2021-07-08 A | 2021-08-02 | 86 | 99% | 0d | 2021-07-08 | 2021-08-02 | 18d | 2021-07-08 | 2021-08-02 | 18d |  |  | 191h | 191h | 13,462.79 | 13,462.79 | 4,462.79 |
| 91 | 1.4.4.1 | Valutazione preventivi con aziende specializzate in penetration testing |  | 10d | 2021-07-08 A | 2021-07-21 A |  | 100% |  | 2021-07-08 | 2021-07-21 | 10d | 2021-07-08 | 2021-07-21 |  | start no earlier than 2021-01-13 | Gabriele De Bartolomeo; Giorgio Levi | 28h | 28h | 851.48 | 851.48 | 851.48 |
| 92 | 1.4.4.2 | Svolgimento penetration testing da parte di due aziende scelte |  | 2d | 2021-07-22 A | 2021-07-23 | 91 | 99% | 0d | 2021-07-22 | 2021-07-23 | 2d | 2021-07-22 | 2021-07-23 | 24d |  | Giorgio Nelli; Francesca Rocca; Giorgio Levi; Budget Penetration testing [0.1%] | 48h | 48h | 6,097.44 | 6,097.44 | 1,097.44 |
| 93 | 1.4.4.3 | Simulazione Disaster Recovery |  | 3d | 2021-07-27 A | 2021-07-29 A | 92 | 100% |  | 2021-07-27 | 2021-07-29 | 3d | 2021-07-27 | 2021-07-29 |  | start no earlier than 2021-07-27 | Giorgio Nelli; Francesca Rocca; Giorgio Levi | 72h | 72h | 1,646.16 | 1,646.16 | 1,646.16 |
| 94 | 1.4.4.4 | Stesura delle linee guida per un piano di Disaster Recovery |  | 2d | 2021-07-30 A | 2021-08-02 A | 93 | 100% |  | 2021-07-30 | 2021-08-02 | 2d | 2021-07-30 | 2021-08-02 |  |  | Gabriele De Bartolomeo | 14h | 14h | 351.82 | 351.82 | 351.82 |
| 95 | 1.4.4.5 | Valutazione preventivi con aziende specializzate nell’attività di training per il contrasto al social engineering |  | 3d | 2021-07-08 A | 2021-07-12 A |  | 100% |  | 2021-07-08 | 2021-07-12 | 3d | 2021-07-08 | 2021-07-12 |  |  | Gabriele De Bartolomeo | 5h | 5h | 125.65 | 125.65 | 125.65 |
| 96 | 1.4.4.6 | Contrattazione ed erogazione del corso anti social-engineering da parte dell'azienda scelta |  | 3d | 2021-07-13 A | 2021-07-15 | 95 | 99% | 0d | 2021-07-13 | 2021-07-15 | 3d | 2021-07-13 | 2021-07-15 | 30d |  | Franca Menta; Budget corso anti social engineering [0.1%] | 24h | 24h | 4,390.24 | 4,390.24 | 390.24 |
| 97 | 1.4.5 | Milestone 5: Realizzazione Infrastruttura | milestone | 0d | 2021-08-03 A | 2021-08-03 A | 90, 87 | 100% |  | 2021-08-03 | 2021-08-03 | 0d | 2021-08-03 | 2021-08-03 |  |  |  |  |  |  |  |  |
| 98 | 1.4.6 | **Deploy della Piattaforma e testing** |  | 14d | 2021-08-04 A | 2021-08-23 A | 97 | 100% |  | 2021-08-04 | 2021-08-23 | 14d | 2021-08-04 | 2021-08-23 |  |  |  | 352h | 352h | 7,204.16 | 7,204.16 | 7,204.16 |
| 99 | 1.4.6.1 | Deploy della piattaforma |  | 4d | 2021-08-04 A | 2021-08-09 A |  | 100% |  | 2021-08-04 | 2021-08-09 | 4d | 2021-08-04 | 2021-08-09 |  |  | Carla Mora | 32h | 32h | 804.16 | 804.16 | 804.16 |
| 100 | 1.4.6.2 | Testing della piattaforma |  | 10d | 2021-08-10 A | 2021-08-23 A | 99 | 100% |  | 2021-08-10 | 2021-08-23 | 10d | 2021-08-10 | 2021-08-23 |  |  | Fanny Velasco; Mauro Neri; Roberto Nigro; Tiziano Seri | 320h | 320h | 6,400 | 6,400 | 6,400 |
| 101 | 1.4.7 | Testing e Chiusura Progetto | milestone | 0d | 2021-08-26 A | 2021-08-26 A | 11 | 100% |  | 2021-08-26 | 2021-08-26 | 0d | 2021-08-26 | 2021-08-26 |  |  |  |  |  |  |  |  |
